# Diagramma

Schedule from MS Project, 2021-09-18 to 2021-11-26, costs in ₽, A marks actual dates.
VVSU

## Calendars

- Стандартный: Mon-Fri 09:00-13:00, 14:00-18:00; Sat-Sun off. Exceptions (off unless hours are given): 2021-09-18 09:00-13:00, 14:00-18:00, 2021-10-02 09:00-13:00, 14:00-18:00, 2021-10-09 09:00-13:00, 14:00-18:00, 2021-10-16 09:00-13:00, 14:00-18:00, 2021-10-30 09:00-13:00, 14:00-18:00, 2021-11-06 09:00-13:00, 14:00-18:00.

## Resources

| Resource | Rate | Notes |
| --- | --- | --- |
| Разработчик-python | 200 |  |
| Технический писатель | 200 |  |
| Маркетолог | 190 |  |
| Руководитель проекта | 100 |  |
| Архитектор БД | 185.5 | Григорьев Илья Романович |
| Интервьюер | 65 |  |
| Тестировщик | 250 |  |
| Аналитик | 300 |  |
| Экономист | 200 |  |

## Schedule

| ID | WBS | Task | Type | Duration | Start | Finish | Predecessors | Complete | Actual start | Actual finish | Constraint | Resources | Work | Actual work | Cost | Actual cost |
| --- | --- | --- | --- | --- | --- | --- | --- | --- | --- | --- | --- | --- | --- | --- | --- | --- |
| 1 | 1 | **Проектирование** |  | 15d | 2021-09-18 A | 2021-10-06 A |  | 100% |  |  |  |  | 74.64h | 74.64h | 11,216 | 11,216 |
| 2 | 1.1 | Составление модели Остервальда | milestone | 0d? | 2021-09-18 A | 2021-09-18 A |  | 100% |  |  | finish no earlier than 2021-10-01 | Технический писатель [34%] |  |  |  |  |
| 3 | 1.2 | Планирование этапов разработки |  | 1d | 2021-09-18 A | 2021-09-20 A |  | 100% |  |  |  | Архитектор БД; Руководитель проекта; Технический писатель [33%] | 18.64h | 18.64h | 2,812 | 2,812 |
| 4 | 1.3 | Интервьюирование |  | 1d | 2021-09-30 A | 2021-09-30 A | 2 | 100% |  |  | finish no earlier than 2021-10-01 | Интервьюер | 8h | 8h | 520 | 520 |
| 5 | 1.4 | Внесение корректировок в изначальную концепцию |  | 2d | 2021-10-02 A | 2021-10-04 A | 4 | 100% |  |  | finish no earlier than 2021-10-04 | Архитектор БД [50%]; Руководитель проекта; Технический писатель [50%] | 32h | 32h | 4,684 | 4,684 |
| 6 | 1.5 | Расчёт предварительной стоимости продукта |  | 2d? | 2021-10-05 A | 2021-10-06 A | 5 | 100% |  |  | finish no earlier than 2021-10-06 | Экономист | 16h | 16h | 3,200 | 3,200 |
| 7 | 2 | **Реализация** |  | 46d? | 2021-10-01 A | 2021-11-26 A |  | 100% |  |  |  |  | 207.03h | 207.04h | 42,247.6 | 42,247.6 |
| 8 | 2.1 | Изичение необходимой документации |  | 1d | 2021-10-02 A | 2021-10-02 A |  | 100% |  |  |  | Архитектор БД [50%]; Разработчик-python [33%] | 6.64h | 6.64h | 1,270 | 1,270 |
| 9 | 2.2 | **Разработка прототипа** |  | 4.03d? | 2021-10-01 A | 2021-10-06 A |  | 100% |  |  |  |  | 10.64h | 10.64h | 2,128 | 2,128 |
| 10 | 2.2.1 | Подготовка среды разработки |  | 1d? | 2021-10-01 A | 2021-10-01 A | 8 | 100% |  |  |  | Разработчик-python | 2.64h | 2.64h | 528 | 528 |
| 11 | 2.2.2 | Написание кода |  | 2.69d | 2021-10-01 A | 2021-10-06 A | 10 | 100% |  |  | finish no earlier than 2021-10-04 | Разработчик-python [33%] | 8h | 8h | 1,600 | 1,600 |
| 12 | 2.3 | **Проектирование архитектуры БД** |  | 18d | 2021-10-02 | 2021-10-22 A |  | 100% | 2021-10-04 |  |  |  | 112h | 112h | 20,776 | 20,776 |
| 13 | 2.3.1 | Изучение рынка СУБД |  | 6d | 2021-10-04 A | 2021-10-09 A |  | 100% |  |  | finish no earlier than 2021-10-09 | Архитектор БД | 48h | 48h | 8,904 | 8,904 |
| 14 | 2.3.2 | Спецификация структуры БД под выполняемую задачу |  | 6d | 2021-10-11 A | 2021-10-16 A | 13 | 100% |  |  | finish no earlier than 2021-10-16 | Архитектор БД | 48h | 48h | 8,904 | 8,904 |
| 15 | 2.3.3 | Тестирование роботоспорсобности на тестовых данных |  | 2d | 2021-10-21 A | 2021-10-22 A | 14 | 100% |  |  | finish no earlier than 2021-10-22 | Архитектор БД | 16h | 16h | 2,968 | 2,968 |
| 16 | 2.4 | **Доведение прототипа до рабочего состояния** |  | 23d | 2021-10-22 A | 2021-11-19 |  | 100% |  | 2021-11-18 |  |  | 51.19h | 51.2h | 12,077.6 | 12,077.6 |
| 17 | 2.4.1 | Интеграция БД |  | 7d | 2021-10-22 A | 2021-11-01 A |  | 100% |  |  | start no earlier than 2021-10-22 | Разработчик-python [-0%]; Архитектор БД [20%] | 11.2h | 11.2h | 2,077.6 | 2,077.6 |
| 18 | 2.4.2 | Реализация заявленного функционала | milestone | 0d | 2021-11-06 A | 2021-11-18 A | 17 | 100% |  |  | finish no earlier than 2021-11-18 | Разработчик-python [-0%] | -0.01h |  |  |  |
| 19 | 2.4.3 | Тестирование функционала |  | 5d | 2021-11-12 A | 2021-11-18 A | 18 | 100% |  |  |  | Тестировщик | 40h | 40h | 10,000 | 10,000 |
| 20 | 2.5 | **Миграция ИТ-инфраструктуры в облако** |  | 4d? | 2021-11-23 A | 2021-11-26 A |  | 100% |  |  |  |  | 26.56h | 26.56h | 5,996 | 5,996 |
| 21 | 2.5.1 | Выбор оптимального по нашим параметрам хостинга |  | 1d? | 2021-11-23 A | 2021-11-23 A |  | 100% |  |  | finish no earlier than 2021-11-18 | Аналитик; Архитектор БД; Разработчик-python [33%] | 18.64h | 18.64h | 4,412 | 4,412 |
| 22 | 2.5.2 | Загрузка сервера на удаленный хостинг |  | 3d? | 2021-11-24 A | 2021-11-26 A | 21 | 100% |  |  | finish no earlier than 2021-11-26 | Разработчик-python [-0%] | 7.92h | 7.92h | 1,584 | 1,584 |
| 23 | 3 | **Продвижение** |  | 20d | 2021-10-25 A | 2021-11-17 A |  | 100% |  |  |  |  | 342.48h | 342.48h | 73,048 | 73,048 |
| 24 | 3.1 | Изучение доступных площадок | manual | 3d | 2021-10-25 A | 2021-10-27 A |  | 100% |  |  |  | Маркетолог | 24h | 24h | 4,560 | 4,560 |
| 25 | 3.2 | Расчёт итоговой стоимости продукта | manual | 5d | 2021-10-25 A | 2021-10-29 A |  | 100% |  |  |  | Экономист [50%] | 20h | 20h | 4,000 | 4,000 |
| 26 | 3.3 | Создание рекламного портрета продукта | manual | 4d | 2021-10-28 A | 2021-11-01 A | 24 | 100% |  |  |  | Маркетолог; Экономист [50%] | 48h | 48h | 9,280 | 9,280 |
| 27 | 3.4 | Рекламная кампания | manual | 13d | 2021-11-02 A | 2021-11-17 A | 26 | 100% |  |  |  | Маркетолог | 104h | 104h | 19,760 | 19,760 |

| ID | WBS | Task | Duration | Start | Finish | Predecessors | Complete | Resources | Work | Actual work | Cost | Actual cost |
| --- | --- | --- | --- | --- | --- | --- | --- | --- | --- | --- | --- | --- |
| 28 | 3.5 | **Оптимизация монетизируемого функционала** | 13d | 2021-11-02 A | 2021-11-17 A | 26 | 100% |  | 146.48h | 146.48h | 35,448 | 35,448 |
| 29 | 3.5.1 | Анализ статистики | 6d | 2021-11-02 A | 2021-11-08 A |  | 100% | Руководитель проекта [50%]; Аналитик | 72h | 72h | 16,800 | 16,800 |
| 30 | 3.5.2 | Прогнозирование доходов и расходов | 7d | 2021-11-09 A | 2021-11-17 A | 29 | 100% | Руководитель проекта [33%]; Аналитик | 74.48h | 74.48h | 18,648 | 18,648 |
